# Запуск нового продукта

Schedule from MS Project, 2015-01-12 to 2015-03-26.

## Calendars

- Стандартный: Mon-Fri 09:00-13:00, 14:00-18:00; Sat-Sun off. Exceptions (off unless hours are given): 2015-03-22 09:00-13:00, 14:00-18:00.

## Resources

| Resource |
| --- |
| Шляпкин Иван |
| Ерохин Илья |
| Дуднова Полина |

## Schedule

| ID | WBS | Task | Duration | Start | Finish | Predecessors | Total slack | Free slack | Constraint | Resources | Work |
| --- | --- | --- | --- | --- | --- | --- | --- | --- | --- | --- | --- |
| 1 | 1 | **Подготовка к выпуску нового продукта** | 55d | 2015-01-12 | 2015-03-26 |  | 0d |  |  |  | 1006.08h |
| 2 | 1.1 | **Этап 1. Планирование** | 2d | 2015-01-12 | 2015-01-13 |  | 16d |  |  |  | 48h |
| 3 | 1.1.1 | Разработка идеи для нового продукта | 0.5d | 2015-01-12 | 2015-01-12 |  | 38.5d | 0d |  | Дуднова Полина; Ерохин Илья; Шляпкин Иван | 12h |
| 4 | 1.1.2 | Формулирование задач продукта | 0.5d | 2015-01-12 | 2015-01-12 | 3 | 38.5d | 0d |  | Дуднова Полина; Ерохин Илья; Шляпкин Иван | 12h |
| 5 | 1.1.3 | Определение сроков выпуска | 1d | 2015-01-13 | 2015-01-13 | 4 | 53d |  | start no earlier than 2015-01-13 | Шляпкин Иван | 8h |
| 6 | 1.1.4 | Подготовка обобщающей документации для перехода к стадии Проектирования | 1d | 2015-01-13 | 2015-01-13 | 4 | 38.5d | 3d | start no earlier than 2015-01-13 | Дуднова Полина; Ерохин Илья | 16h |
| 7 | 1.2 | **Этап 2. Проектирование** | 5d | 2015-01-19 | 2015-01-23 |  | 13d |  |  |  | 120h |
| 8 | 1.2.1 | Проектирование серверной части | 3d | 2015-01-19 | 2015-01-21 | 6 | 35.5d | 0d | start no earlier than 2015-01-19 | Ерохин Илья | 24h |
| 9 | 1.2.2 | Проектирование клиентской части | 5d | 2015-01-19 | 2015-01-23 | 6 | 45d |  | start no earlier than 2015-01-19 | Дуднова Полина; Шляпкин Иван | 80h |
| 10 | 1.2.3 | Проектирование взаимодействия сервера и клиентских приложений | 2d | 2015-01-22 | 2015-01-23 | 8 | 35.5d | 0d | start no earlier than 2015-01-22 | Ерохин Илья | 16h |
| 11 | 1.3 | **Этап 3. Выполнение** | 39d | 2015-01-26 | 2015-03-19 |  | 6d |  |  |  | 672h |
| 12 | 1.3.1 | **Разработка сервера** | 24d | 2015-01-26 | 2015-02-26 |  | 15.5d |  |  |  | 176h |
| 13 | 1.3.1.1 | **Сервер для обработки клиентских запросов** | 10d | 2015-01-27 | 2015-02-09 |  | 14.5d |  |  |  | 80h |
| 14 | 1.3.1.1.1 | Написание эхо-сервера с создание процессов для каждого подключения | 1d | 2015-01-27 | 2015-01-27 | 8, 10 | 43d |  | start no earlier than 2015-01-27 | Ерохин Илья | 8h |
| 15 | 1.3.1.1.2 | Написание протокола запросов | 0.5d | 2015-01-28 | 2015-01-28 | 8, 10 | 33.5d | 0d | start no earlier than 2015-01-28 | Ерохин Илья | 4h |
| 16 | 1.3.1.1.3 | Составление документации по протоколу для разработчиков клиентских приложений | 0.5d | 2015-01-28 | 2015-01-28 | 15 | 33.5d | 0d | start no earlier than 2015-01-28 | Ерохин Илья | 4h |
| 17 | 1.3.1.1.4 | Внедрение протокола в серверную часть | 7d | 2015-01-29 | 2015-02-06 | 15, 16 | 33.5d | 0d | start no earlier than 2015-01-29 | Ерохин Илья | 56h |
| 18 | 1.3.1.1.5 | Написание функционала для отправки e-mail сообщений | 1d | 2015-02-09 | 2015-02-09 | 17 | 33.5d | 4d | start no earlier than 2015-02-09 | Ерохин Илья | 8h |
| 19 | 1.3.1.2 | **Фотосервер** | 4d | 2015-02-10 | 2015-02-13 |  | 8.5d |  |  |  | 32h |
| 20 | 1.3.1.2.1 | Написание сервера для приёма фотографий пользователей в формате .jpg | 4d | 2015-02-10 | 2015-02-13 | 8, 10 | 29.5d | 0d | start no earlier than 2015-02-10 | Ерохин Илья | 32h |
| 21 | 1.3.1.3 | **Запуск серверной части** | 24d | 2015-01-26 | 2015-02-26 |  | 21d |  |  |  | 64h |
| 22 | 1.3.1.3.1 | Покупка и настройка облачного сервиса для запуска серверной части | 1d | 2015-01-26 | 2015-01-26 | 8, 10 | 44d |  | start no earlier than 2015-01-26 | Ерохин Илья | 8h |
| 23 | 1.3.1.3.2 | Настройка сервиса для отправки e-mail сообщений по протоколу smtp | 0.5d | 2015-02-16 | 2015-02-16 | 18 | 29.5d |  | start no earlier than 2015-02-16 | Ерохин Илья | 4h |
| 24 | 1.3.1.3.3 | Запуск приложений на сервере | 0.5d | 2015-02-16 | 2015-02-16 | 17, 20 | 29.5d |  | start no earlier than 2015-02-16 | Ерохин Илья | 4h |
| 25 | 1.3.1.3.4 | Оптимизация и отладка | 6d | 2015-02-19 | 2015-02-26 |  | 21d |  | start no earlier than 2015-02-19 | Ерохин Илья | 48h |

Notes:
- 14: Восприимчивость рынка оценивается на основе отзывов ключевых клиентов, анализа фокус-групп и тестовых рынков или бета-тестирования.

| ID | WBS | Task | Duration | Start | Finish | Predecessors | Total slack | Free slack | Constraint | Resources | Work |
| --- | --- | --- | --- | --- | --- | --- | --- | --- | --- | --- | --- |
| 26 | 1.3.2 | **Разработка клиента под Android** | 39d | 2015-01-26 | 2015-03-19 |  | 6d |  |  |  | 288h |
| 27 | 1.3.2.1 | Разработка дизайна приложения | 5d | 2015-01-26 | 2015-01-30 | 9 | 13d | 0d | start no earlier than 2015-01-26 | Шляпкин Иван | 40h |
| 28 | 1.3.2.2 | Отрисовка форм и элементов управления | 3d | 2015-02-02 | 2015-02-04 | 27 | 13d | 2d | start no earlier than 2015-02-02 | Шляпкин Иван | 24h |
| 29 | 1.3.2.3 | Разработка класса для формирования и отправки запросов на сервер | 2d | 2015-02-16 | 2015-02-18 | 24 | 8.5d | 2.5d | start no earlier than 2015-02-16 | Шляпкин Иван | 16h |
| 30 | 1.3.2.4 | Написание обработчиков событий, вызываемых в приложении | 5d | 2015-02-09 | 2015-02-13 | 28 | 11d | 5d | start no earlier than 2015-02-09 | Шляпкин Иван | 40h |
| 31 | 1.3.2.5 | Добавление функционала для работы с фотографиями пользователей | 2d | 2015-02-19 | 2015-02-20 | 24 | 6d | 0d | start no earlier than 2015-02-19 | Шляпкин Иван | 16h |
| 32 | 1.3.2.6 | Отладка и оптимизация | 19d | 2015-02-23 | 2015-03-19 | 29, 30, 31 | 6d |  | start no earlier than 2015-02-19 | Шляпкин Иван | 152h |
| 33 | 1.3.3 | **Разработка клиента под Windows Phone 8** | 37d | 2015-01-26 | 2015-03-17 |  | 8d |  |  |  | 208h |
| 34 | 1.3.3.1 | Разработка дизайна приложения | 3d | 2015-01-26 | 2015-01-28 | 9 | 28d | 0d | start no earlier than 2015-01-26 | Дуднова Полина | 24h |
| 35 | 1.3.3.2 | Отрисовка форм и элементов управления | 2d | 2015-01-29 | 2015-01-30 | 34 | 28d | 15d | start no earlier than 2015-01-29 | Дуднова Полина | 16h |
| 36 | 1.3.3.3 | Разработка класса для формирования и отправки запросов на сервер | 4d | 2015-02-16 | 2015-02-20 | 24 | 19.5d | 11.5d | start no earlier than 2015-02-16 | Дуднова Полина | 32h |
| 37 | 1.3.3.4 | Написание обработчиков событий, вызываемых в приложении | 6d | 2015-02-23 | 2015-03-02 | 35 | 13d | 5d | start no earlier than 2015-02-23 | Дуднова Полина | 48h |
| 38 | 1.3.3.5 | Добавление функционала для работы с фотографиями пользователей | 5d | 2015-03-03 | 2015-03-09 | 24 | 14d |  | start no earlier than 2015-03-03 | Дуднова Полина | 40h |
| 39 | 1.3.3.6 | Отладка и оптимизация | 6d | 2015-03-10 | 2015-03-17 | 35, 36, 37 | 8d |  | start no earlier than 2015-03-10 | Дуднова Полина | 48h |
| 40 | 1.4 | **Тестирование** | 7d | 2015-02-27 | 2015-03-09 |  |  |  |  |  | 14.08h |
| 41 | 1.4.1 | Разработка Test Plan | 0.25d | 2015-02-27 | 2015-02-27 | 24 | 19.24d | 0d | start no earlier than 2015-02-27 | Ерохин Илья | 2h |
| 42 | 1.4.2 | Разработка тестов | 0.13d | 2015-02-27 | 2015-02-27 | 41 | 19.24d | 4.87d | start no earlier than 2015-02-27 | Ерохин Илья | 1.04h |
| 43 | 1.4.3 | Исполнение тестов | 0.75d | 2015-03-06 | 2015-03-06 | 42 | 14.37d | 0d | finish no earlier than 2015-03-06 | Ерохин Илья | 6h |
| 44 | 1.4.4 | Анализ выполнения тестов | 0.25d | 2015-03-09 | 2015-03-09 | 43 | 14.37d | 0d | start no earlier than 2015-02-09 | Ерохин Илья | 2h |
| 45 | 1.4.5 | Подготовка репорта о багах | 0.38d | 2015-03-09 | 2015-03-09 | 44 | 14.37d |  | start no earlier than 2015-01-09 | Ерохин Илья | 3.04h |
| 46 | 1.5 | **Этап 4. Окончание разработки** | 8d | 2015-03-18 | 2015-03-26 |  | 0d |  |  |  | 152h |
| 47 | 1.5.1 | Написать User Guide | 1d | 2015-03-18 | 2015-03-18 |  | 7d |  | finish no earlier than 2015-03-18 | Дуднова Полина | 8h |
| 48 | 1.5.2 | Разработать презентацию | 1d | 2015-03-19 | 2015-03-19 |  | 6d |  | finish no earlier than 2015-03-19 | Дуднова Полина; Ерохин Илья; Шляпкин Иван | 24h |
| 49 | 1.5.3 | Написать речь | 1d | 2015-03-20 | 2015-03-20 |  | 5d |  | finish no earlier than 2015-03-20 | Дуднова Полина; Ерохин Илья; Шляпкин Иван | 24h |
| 50 | 1.5.4 | Подготовиться к защите проекта | 3d | 2015-03-23 | 2015-03-25 |  | 0d |  | start no earlier than 2015-03-23 | Дуднова Полина; Ерохин Илья; Шляпкин Иван | 72h |
| 51 | 1.5.5 | ЗАЩИТА КУРСОВОЙ РАБОТЫ | 1d | 2015-03-26 | 2015-03-26 | 50 | 0d |  | start no earlier than 2015-03-26 | Дуднова Полина; Ерохин Илья; Шляпкин Иван | 24h |

Notes:
- 27: Характеристики продукта оцениваются путем тестирования и квалификационных испытаний.
- 34: Производственные процессы разрабатываются вначале с использованием опытных производственных линий, а затем - с использованием рабочих производственных линий.
- 36: Канал распределения занят соответствующим уровнем обработки продукта.
- 47: Выпуск нового продукта осуществляется, когда каналы обслуживания, продаж и распределения готовы к работе.
